# Diesis#

Schedule from MS Project, 2016-02-25 to 2016-06-03, A marks actual dates.

## Calendars

- Standard: Mon-Fri 09:00-13:00, 14:00-18:00; Sat-Sun off.

## Resources

| Resource |
| --- |
| larovere vittorio |
| morisco gabriele |
| beggio luca |
| lanzi andrea |

## Schedule

| ID | WBS | Task | Type | Duration | Start | Finish | Predecessors | Complete | Remaining | Total slack | Constraint | Resources | Work | Actual work |
| --- | --- | --- | --- | --- | --- | --- | --- | --- | --- | --- | --- | --- | --- | --- |
| 1 | 1 | **Spartito XML** |  | 71.5d | 2016-02-25 A | 2016-06-03 |  | 82% | 13.03d |  |  |  | 996.5h | 791.4h |
| 2 | 1.1 | **applicazione desktop** |  | 71d | 2016-02-25 A | 2016-06-02 |  | 91% | 6.2d |  |  |  | 534h | 487.4h |
| 3 | 1.1.1 | **area utente** |  | 70d | 2016-02-25 A | 2016-06-01 |  | 93% | 4.88d | 1.5d |  |  | 516h | 480h |
| 4 | 1.1.1.1 | **sezione: registrazione tag** |  | 57.5d | 2016-02-25 A | 2016-05-16 |  | 99% | 0.48d | 14d |  |  | 484h | 480h |
| 5 | 1.1.1.1.1 | **Registratore** |  | 57.5d | 2016-02-25 A | 2016-05-16 |  | 99% | 0.48d | 14d |  |  | 484h | 480h |
| 6 | 1.1.1.1.1.1 | Gestore Timer | manual | 2d | 2016-04-20 A | 2016-04-21 A |  | 100% |  |  | start no earlier than 2016-04-20 | beggio luca | 16h | 16h |
| 7 | 1.1.1.1.1.2 | Registrazione traccia |  | 1d | 2016-02-25 A | 2016-02-25 A | 37 | 100% |  |  |  | larovere vittorio | 8h | 8h |
| 8 | 1.1.1.1.1.3 | **Elaborazione Traccia** |  | 57.5d | 2016-02-25 A | 2016-05-16 |  | 99% | 0.5d | 14d |  |  | 460h | 456h |
| 9 | 1.1.1.1.1.3.1 | Riconoscere frequenza singole note |  | 12d | 2016-02-25 A | 2016-03-11 A |  | 100% |  |  | finish no earlier than 2016-03-11 | morisco gabriele | 96h | 96h |
| 10 | 1.1.1.1.1.3.2 | Riconoscere durata singole note |  | 4d | 2016-02-25 A | 2016-03-01 A |  | 100% |  |  | start no earlier than 2016-02-24 | lanzi andrea | 32h | 32h |
| 11 | 1.1.1.1.1.3.3 | Richiamare tutto all'interno del programma |  | 1d | 2016-03-02 A | 2016-03-02 A | 32, 9 | 100% |  |  | start no earlier than 2016-03-02 | lanzi andrea | 8h | 8h |
| 12 | 1.1.1.1.1.3.4 | **Scrittura File XML** |  | 40.5d | 2016-03-21 A | 2016-05-16 |  | 99% | 0.5d | 14d |  |  | 324h | 320h |
| 13 | 1.1.1.1.1.3.4.1 | Parser in music XML |  | 40d | 2016-03-21 A | 2016-05-13 A | 11 | 100% |  |  | start no earlier than 2016-03-19 | lanzi andrea | 320h | 320h |
| 14 | 1.1.1.1.1.3.4.2 | Inviare a server (richiama Web Method) |  | 0.5d | 2016-05-16 | 2016-05-16 | 13 |  |  | 14d |  | beggio luca | 4h |  |
| 15 | 1.1.1.2 | **sezione: credenziali utente (richiama WebMethod)** |  | 1d | 2016-05-18 | 2016-05-18 |  |  |  |  |  |  | 8h |  |
| 16 | 1.1.1.2.1 | cambiamento email |  | 0.5d | 2016-03-16 | 2016-03-16 |  |  |  | 57d | start no earlier than 2016-03-16 | beggio luca | 4h |  |
| 17 | 1.1.1.2.2 | cambiamento password |  | 0.5d | 2016-05-18 | 2016-05-18 | 16 |  |  | 12d |  | beggio luca | 4h |  |
| 18 | 1.1.1.3 | **sezione: visualizzazione tag** |  | 3d | 2016-05-30 | 2016-06-01 |  |  |  |  |  |  | 24h |  |
| 19 | 1.1.1.3.1 | Filtro in base genere |  | 1d | 2016-05-30 | 2016-05-30 |  |  |  | 3.5d |  | lanzi andrea | 8h |  |
| 20 | 1.1.1.3.2 | visualizza elenco di tutti i files |  | 1d | 2016-05-31 | 2016-05-31 |  |  |  | 2.5d | start no earlier than 2016-05-31 | lanzi andrea | 8h |  |
| 21 | 1.1.1.3.3 | scarica zip con xml del tuo account |  | 1d | 2016-06-01 | 2016-06-01 |  |  |  | 1.5d | start no earlier than 2016-06-01 | lanzi andrea | 8h |  |
| 22 | 1.1.2 | **area login (richiama WebMethod)** |  | 3d | 2016-05-12 A | 2016-05-16 |  | 20% | 2.4d |  |  |  | 12h | 2.4h |
| 23 | 1.1.2.1 | login (implementazione) |  | 0.5d | 2016-05-12 A | 2016-05-12 |  | 20% | 0.4d | 16d | start no earlier than 2016-03-04 | beggio luca | 4h | 0.8h |
| 24 | 1.1.2.2 | registrazione nuovo utente (implementazione) |  | 0.5d | 2016-05-12 A | 2016-05-12 |  | 20% | 0.4d | 16d |  | beggio luca | 4h | 0.8h |
| 25 | 1.1.2.3 | password dimenticata (implementazione) |  | 0.5d | 2016-05-13 A | 2016-05-13 | 29 | 20% | 0.4d | 15d |  | beggio luca | 4h | 0.8h |

| ID | WBS | Task | Type | Duration | Start | Finish | Predecessors | Complete | Remaining | Actual start | Total slack | Free slack | Constraint | Resources | Work | Actual work |
| --- | --- | --- | --- | --- | --- | --- | --- | --- | --- | --- | --- | --- | --- | --- | --- | --- |
| 26 | 1.1.3 | **GUI** |  | 9d | 2016-03-03 A | 2016-03-15 |  | 83% | 1.5d |  |  |  |  |  | 6h | 5h |
| 27 | 1.1.3.1 | sezione login |  | 1h | 2016-03-03 A | 2016-03-03 A |  | 100% |  |  |  |  | start no earlier than 2016-03-03 | beggio luca; lanzi andrea | 1h | 1h |
| 28 | 1.1.3.2 | nuovo registrazione nuovo utente |  | 1h | 2016-03-08 A | 2016-03-08 A |  | 100% |  |  |  |  |  | beggio luca; lanzi andrea | 1h | 1h |
| 29 | 1.1.3.3 | sezione password dimenticata |  | 1h | 2016-03-10 A | 2016-03-10 A |  | 100% |  |  |  |  |  | beggio luca; lanzi andrea | 1h | 1h |
| 30 | 1.1.3.4 | sezione credenziali |  | 1h | 2016-03-14 A | 2016-03-14 A | 25 | 100% |  |  |  |  |  | beggio luca; lanzi andrea | 1h | 1h |
| 31 | 1.1.3.5 | sezione registrazione |  | 1h | 2016-03-14 A | 2016-03-14 A |  | 100% |  |  |  |  |  | beggio luca; lanzi andrea | 1h | 1h |
| 32 | 1.1.3.6 | sezione visualizza |  | 1h | 2016-03-03 | 2016-03-03 |  |  |  |  | 66.38d |  |  | beggio luca | 1h |  |
| 34 | 1.2 | **applicazione web** |  | 71.5d | 2016-02-25 | 2016-06-03 |  | 82% | 13.08d | 2016-03-14 |  |  |  |  | 374.5h | 276h |
| 35 | 1.2.1 | **area utente** |  | 58d | 2016-03-14 A | 2016-06-01 |  | 88% | 7.25d |  | 1.5d |  |  |  | 240h | 204h |
| 36 | 1.2.1.1 | **sezione: credenziali utente** |  | 4d | 2016-05-27 | 2016-06-01 |  |  |  |  |  |  |  |  | 16h |  |
| 37 | 1.2.1.1.1 | cambiamento email |  | 1d | 2016-05-30 | 2016-05-30 | 38 |  |  |  | 3.5d |  | start no earlier than 2016-02-25 | larovere vittorio | 8h |  |
| 38 | 1.2.1.1.2 | cambiamento password |  | 1d | 2016-05-27 | 2016-05-27 | 52 |  |  |  | 3.5d | 0d |  | larovere vittorio | 8h |  |
| 39 | 1.2.1.2 | **sezione: visualizzazione tag** |  | 7d | 2016-04-10 | 2016-04-18 |  | 93% | 0.5d | 2016-03-14 |  |  |  |  | 56h | 52h |
| 40 | 1.2.1.2.1 | Filtro in base genere | manual | 4d | 2016-04-10 A | 2016-04-13 A |  | 100% |  |  |  |  |  | morisco gabriele | 32h | 32h |
| 41 | 1.2.1.2.2 | visualizza elenco files |  | 2d | 2016-03-14 A | 2016-03-15 A |  | 100% |  |  |  |  | start no earlier than 2016-03-14 | morisco gabriele | 16h | 16h |
| 42 | 1.2.1.2.3 | scarica zip con xml del tuo account |  | 1d | 2016-04-16 A | 2016-04-18 |  | 50% | 0.5d |  | 33.5d |  |  | morisco gabriele | 8h | 4h |
| 43 | 1.2.1.3 | **area login** |  | 48d | 2016-03-24 A | 2016-05-30 |  | 95% | 2.53d |  | 3.5d |  |  |  | 168h | 152h |
| 44 | 1.2.1.3.1 | login (implementazione) |  | 15d | 2016-03-24 A | 2016-05-18 A | 48 | 100% |  |  |  |  | finish no earlier than 2016-04-07 | larovere vittorio; morisco gabriele | 120h | 120h |
| 45 | 1.2.1.3.2 | registrazione nuovo utente (implementazione) |  | 3d | 2016-04-07 A | 2016-05-30 | 49 | 67% | 1d |  | 3.5d |  | finish no earlier than 2016-04-14 | larovere vittorio; morisco gabriele | 40h | 24h |
| 46 | 1.2.1.3.3 | password dimenticata (implementazione) |  | 1d | 2016-04-08 A | 2016-04-08 A | 50 | 100% |  |  |  |  |  | larovere vittorio | 8h | 8h |
| 47 | 1.2.2 | **GUI** |  | 41d | 2016-03-31 | 2016-05-26 |  | 69% | 12.62d | 2016-04-04 |  |  |  |  | 134.5h | 72h |
| 48 | 1.2.2.1 | sezione login | manual | 3d | 2016-04-04 A | 2016-04-29 A |  | 100% |  |  |  |  | finish no earlier than 2016-04-28 | larovere vittorio; morisco gabriele | 24h | 24h |
| 49 | 1.2.2.2 | nuovo registrazione nuovo utente | manual | 2d | 2016-04-19 A | 2016-04-21 A |  | 100% |  |  |  |  | finish no earlier than 2016-04-08 | larovere vittorio; morisco gabriele | 16h | 16h |
| 50 | 1.2.2.3 | sezione password dimenticata | manual | 2d | 2016-04-04 A | 2016-04-06 A |  | 100% |  |  |  |  | finish no earlier than 2016-04-07 | larovere vittorio; morisco gabriele | 16h | 16h |
| 51 | 1.2.2.4 | AreaUtente - modifica password | manual | 2d | 2016-05-25 A | 2016-05-26 |  |  | 2d |  |  |  |  | larovere vittorio; morisco gabriele | 32h |  |
| 52 | 1.2.2.5 | AreaUtente - modifica email | manual | 2d | 2016-05-25 A | 2016-05-26 | 46 |  | 2d |  |  |  | start no earlier than 2016-05-12 | morisco gabriele; larovere vittorio | 30.5h |  |
| 53 | 1.2.2.6 | sezione visualizza | manual | 2d | 2016-04-14 A | 2016-04-22 A |  | 100% |  |  |  |  | finish no earlier than 2016-04-21 | morisco gabriele; larovere vittorio | 16h | 16h |

| ID | WBS | Task | Type | Duration | Start | Finish | Predecessors | Complete | Remaining | Total slack | Constraint | Resources | Work | Actual work |
| --- | --- | --- | --- | --- | --- | --- | --- | --- | --- | --- | --- | --- | --- | --- |
| 56 | 1.3 | **Web Service (Web Method):** |  | 36d | 2016-04-11 A | 2016-05-28 |  | 32% | 24.55d |  |  |  | 88h | 28h |
| 57 | 1.3.1 | Login (implementazione) | manual | 1d | 2016-04-11 A | 2016-04-11 A | 14 | 100% |  |  | start no earlier than 2016-04-11 | beggio luca | 8h | 8h |
| 58 | 1.3.2 | Iscrizione Nuovo Utente | manual | 1d | 2016-04-12 A | 2016-04-12 A |  | 100% |  |  |  | beggio luca | 8h | 8h |
| 59 | 1.3.3 | Recupero Password | manual | 2d | 2016-04-13 A | 2016-04-14 |  | 75% | 0.5d |  |  | beggio luca | 16h | 12h |
| 60 | 1.3.4 | AreaUtente - ModificaEmail | manual | 1d | 2016-05-16 | 2016-05-16 |  |  |  |  |  | beggio luca | 8h |  |
| 61 | 1.3.5 | AreaUtente - ModificaPassword | manual | 1d | 2016-05-17 | 2016-05-17 |  |  |  |  |  | beggio luca | 8h |  |
| 62 | 1.3.6 | Ricezione - Risposta Visualizzazione files | manual | 1d | 2016-04-15 | 2016-04-15 |  |  |  |  |  | beggio luca | 8h |  |
| 63 | 1.3.7 | Aggiungi File | manual | 1d | 2016-04-18 | 2016-04-18 |  |  |  |  |  | beggio luca | 8h |  |
| 65 | 1.3.8 | **Installazione Windows Server** |  | 1d | 2016-04-11 | 2016-04-11 |  |  |  | 0d |  |  | 24h |  |
| 66 | 1.3.8.1 | Installazione Web Server | manual | 1d | 2016-04-11 | 2016-04-11 |  |  |  |  |  | lanzi andrea | 8h |  |
| 67 | 1.3.8.2 | Installazione Web Services | manual | 1d | 2016-04-11 | 2016-04-11 |  |  |  |  |  | lanzi andrea | 8h |  |
| 68 | 1.3.8.3 | Installazione Database | manual | 1d | 2016-04-11 | 2016-04-11 |  |  |  |  |  | lanzi andrea | 8h |  |
